Schedule from MS Project, 2008-09-01 to 2009-02-09, costs in ₽, A marks actual dates.

## Calendars

- Стандартный: Mon-Thu 09:00-13:00, 14:00-18:15; Fri 09:00-13:00, 14:00-17:00; Sat-Sun off. Exceptions (off unless hours are given): 2009-01-01.

## Resources

| Resource | Rate | Notes |
| --- | --- | --- |
| Руководитель проекта | 200 | Осуществляет руководство всеми этапами проекта |
| Аналитик | 130 |  |
| Специалист по испытаниям | 100 |  |
| Старший программист | 150 |  |
| Программист-аналитик | 90 |  |
| Программист | 100 |  |
| Специалист по документации | 80 |  |
| Младший программист | 50 |  |
| Представитель заказчика |  |  |

## Schedule

| ID | WBS | Task | Duration | Start | Finish | Predecessors | Complete | Remaining | Baseline start | Baseline finish | Baseline duration | Total slack | Resources | Work | Actual work | Cost | Baseline cost | Actual cost |
| --- | --- | --- | --- | --- | --- | --- | --- | --- | --- | --- | --- | --- | --- | --- | --- | --- | --- | --- |
| 1 | 1 | **Разработка ПО** | 115d | 2008-09-01 A | 2009-02-09 |  | 20% | 92.15d | 2008-09-01 | 2009-01-26 | 105d | 0d |  | 2160.75h | 304.75h | 183,417.5 | 169,400 | 39,017.5 |
| 2 | 1.1 | **Постановка задачи** | 13d | 2008-09-01 A | 2008-09-17 A |  | 100% |  | 2008-09-01 | 2008-09-16 | 12d |  |  | 200h | 200h | 26,600 | 22,480 | 26,600 |
| 3 | 1.1.1 | **Определение требований к ПО** | 4d | 2008-09-01 A | 2008-09-04 A |  | 100% |  | 2008-09-01 | 2008-09-08 | 6d |  |  | 40h | 40h | 6,600 | 9,200 | 6,600 |
| 4 | 1.1.1.1 | Определение функциональных требований | 3d | 2008-09-01 A | 2008-09-03 A |  | 100% |  | 2008-09-01 | 2008-09-08 | 6d |  | Руководитель проекта [50%]; Аналитик [50%] | 24h | 24h | 3,960 | 5,520 | 3,960 |
| 5 | 1.1.1.2 | Определение эксплуатационных требований | 2d | 2008-09-02 A | 2008-09-04 A | 4FF | 100% |  | 2008-09-02 | 2008-09-08 | 4d |  | Руководитель проекта [50%]; Аналитик [50%] | 16h | 16h | 2,640 | 3,680 | 2,640 |
| 6 | 1.1.2 | Предпроектные исследования | 5d | 2008-09-04 A | 2008-09-11 A | 5 | 100% |  | 2008-09-08 | 2008-09-15 | 5d |  | Аналитик; Программист-аналитик | 80h | 80h | 8,800 | 8,800 | 8,800 |
| 7 | 1.1.3 | Разработка и утверждение технического | 5d | 2008-09-10 A | 2008-09-17 A | 6SS+4d | 100% |  | 2008-09-15 | 2008-09-16 | 2d |  | Руководитель проекта; Специалист по документации | 80h | 80h | 11,200 | 4,480 | 11,200 |
| 8 | 1.2 | **Анализ требований и определение спецификации** | 16d | 2008-09-17 A | 2008-10-09 |  | 59% | 6.55d | 2008-09-16 | 2008-09-29 | 8.94d | 86d |  | 180.75h | 104.75h | 21,497.5 | 11,600 | 12,417.5 |
| 9 | 1.2.1 | Анализ требований технического задания | 4d | 2008-09-17 A | 2008-09-26 | 7 | 50% | 2d | 2008-09-16 | 2008-09-29 | 3.94d | 95d | Руководитель проекта [50%]; Аналитик | 24.75h | 8.75h | 3,777.5 | 3,680 | 1,697.5 |
| 10 | 1.2.2 | Выбор математического аппарата формализации | 12d | 2008-09-17 A | 2008-10-03 | 7 | 42% | 7d | 2008-09-16 | 2008-09-19 | 3d | 90d | Аналитик; Программист-аналитик [50%] | 120h | 60h | 14,000 | 4,200 | 7,000 |
| 11 | 1.2.3 | Разработка модели предметной области | 4d | 2008-10-06 A | 2008-10-09 A | 10 | 100% |  | 2008-09-22 | 2008-09-25 | 4d |  | Аналитик [25%]; Программист-аналитик [50%] | 24h | 24h | 2,480 | 2,480 | 2,480 |
| 12 | 1.2.4 | Согласование и утверждение эскизного проекта | 2d | 2008-10-07 A | 2008-10-09 A | 11FF | 100% |  | 2008-09-23 | 2008-09-25 | 2d |  | Аналитик [25%]; Программист-аналитик [50%] | 12h | 12h | 1,240 | 1,240 | 1,240 |
| 13 | 1.3 | **Проектирование** | 17d | 2008-10-09 | 2008-11-03 |  |  |  | 2008-09-25 | 2008-10-20 | 17d | 0d | Младший программист | 340h |  | 31,520 | 31,520 |  |
| 14 | 1.3.1 | Проектирование общей структуры ПО | 5d | 2008-10-09 | 2008-10-16 | 12 |  |  | 2008-09-25 | 2008-10-02 | 5d | 0d | Старший программист [50%]; Программист [50%] | 40h |  | 5,000 | 5,000 |  |
| 15 | 1.3.2 | Декомпозиция компонентов и построение структурных иерархий | 6.94d | 2008-10-16 | 2008-11-03 | 14 |  |  | 2008-10-02 | 2008-10-20 | 6.94d | 69.06d | Старший программист; Программист [50%] | 60h |  | 8,000 | 8,000 |  |
| 16 | 1.3.3 | Проектирование компонентов | 7d | 2008-10-21 | 2008-10-30 | 14FS+3d |  |  | 2008-10-07 | 2008-10-16 | 7d | 0d | Программист | 56h |  | 5,600 | 5,600 |  |
| 17 | 1.3.4 | Согласование и утверждение технического проекта | 3d | 2008-10-29 | 2008-11-03 | 16SS+6d |  |  | 2008-10-15 | 2008-10-20 | 3d | 0d | Руководитель проекта [50%]; Старший программист [50%]; Специалист по документации | 48h |  | 6,120 | 6,120 |  |
| 18 | 1.4 | **Реализация** | 62d | 2008-11-03 | 2009-01-29 |  |  |  | 2008-10-20 | 2009-01-15 | 62d | 0d | Представитель заказчика | 1320h |  | 89,800 | 89,800 |  |
| 19 | 1.4.1 | Разработка программы | 30d | 2008-11-03 | 2008-12-15 | 17 |  |  | 2008-10-20 | 2008-12-01 | 30d | 0d | Программист; Старший программист [50%] | 360h |  | 42,000 | 42,000 |  |
| 20 | 1.4.2 | Разработка программной документации | 10d | 2008-12-15 | 2008-12-29 | 19FF |  |  | 2008-12-01 | 2008-12-15 | 10d | 0d | Программист; Специалист по документации [50%] | 120h |  | 11,200 | 11,200 |  |
| 21 | 1.4.3 | **Испытание программы** | 22d | 2008-12-29 | 2009-01-29 |  |  |  | 2008-12-15 | 2009-01-15 | 22d | 0d |  | 264h |  | 26,400 | 26,400 |  |
| 22 | 1.4.3.1 | Разработка методики тестирования | 2d | 2008-12-29 | 2008-12-31 | 20 |  |  | 2008-12-15 | 2008-12-17 | 2d | 0d | Специалист по испытаниям; Программист [50%] | 24h |  | 2,400 | 2,400 |  |
| 23 | 1.4.3.2 | Тестирование модулей | 15d | 2008-12-31 | 2009-01-29 | 22 |  |  | 2008-12-17 | 2009-01-15 | 15d | 7d | Специалист по испытаниям; Программист [50%] | 120h |  | 12,000 | 12,000 |  |
| 24 | 1.4.3.3 | Тестирование интеграции | 10d | 2009-01-08 | 2009-01-22 | 22FS+5d |  |  | 2008-12-24 | 2009-01-08 | 10d | 0d | Специалист по испытаниям; Программист [50%] | 120h |  | 12,000 | 12,000 |  |
| 25 | 1.4.4 | Согласование и утверждение рабочего проекта | 5d | 2009-01-21 | 2009-01-28 | 24FS-1d |  |  | 2009-01-07 | 2009-01-14 | 5d | 0d | Руководитель проекта [50%]; Старший программист [50%]; Специалист по документации | 80h |  | 10,200 | 10,200 |  |

| ID | WBS | Task | Type | Duration | Start | Finish | Predecessors | Baseline start | Baseline finish | Baseline duration | Total slack | Resources | Work | Cost | Baseline cost |
| --- | --- | --- | --- | --- | --- | --- | --- | --- | --- | --- | --- | --- | --- | --- | --- |
| 26 | 1.5 | **Внедрение** |  | 8d | 2009-01-28 | 2009-02-09 |  | 2009-01-14 | 2009-01-26 | 8d | 0d |  | 120h | 14,000 | 14,000 |
| 27 | 1.5.1 | Подготовка и передача ПО и программной документации для сопровождения |  | 3d | 2009-01-28 | 2009-02-02 | 25 | 2009-01-14 | 2009-01-19 | 3d | 0d | Руководитель проекта [50%]; Программист [50%]; Специалист по документации | 48h | 5,520 | 5,520 |
| 28 | 1.5.2 | Оформление и утверждение акта о передаче программы |  | 2d | 2009-02-03 | 2009-02-04 | 27FF | 2009-01-20 | 2009-01-21 | 2d | 3d | Руководитель проекта; Специалист по документации | 32h | 4,480 | 4,480 |
| 29 | 1.5.3 | Обучение персонала |  | 5d | 2009-02-03 | 2009-02-09 | 27 | 2009-01-20 | 2009-01-26 | 5d | 0d | Программист | 40h | 4,000 | 4,000 |
| 30 | 1.6 | Завершение проекта | milestone | 0d | 2009-02-09 | 2009-02-09 | 29 | 2009-01-26 | 2009-01-26 | 0d | 0d |  |  |  |  |
